# detail_elaboration_iteration

Schedule from Primavera P6, 1999-05-03 to 1999-05-18.

## Resources

| Resource | Group |
| --- | --- |
| Project Manager | labor |
| Project Reviewer | labor |
| System Analyst | labor |
| Use-Case Specifier | labor |
| Requirements Reviewer | labor |
| Designer | labor |
| Database Designer | labor |
| Design Reviewer | labor |
| Architecture Reviewer | labor |
| Implementer | labor |
| Code Reviewer | labor |
| Process Engineer | labor |
| System Administrator | labor |
| Any Worker | labor |
| Configuration Manager | labor |
| Change Control Manager | labor |
| Tool Specialist | labor |
| Integrator | labor |
| Software Architect | labor |
| Test Manager | labor |
| Test Analyst | labor |
| Test Designer | labor |
| Tester | labor |
| User-Interface Designer | labor |

## Schedule

| ID | WBS | Activity | Duration | Start | Finish | Predecessors | Total float | Resources |
| --- | --- | --- | --- | --- | --- | --- | --- | --- |
|  | 0 | **detail_elaboration_iteration** |  | 1999-05-03 | 1999-05-18 |  |  |  |
|  | 1 | **Project Management** |  | 1999-05-03 | 1999-05-18 |  |  |  |
|  | 1.1 | **Manage Iteration** |  | 1999-05-03 | 1999-05-16 |  |  |  |
| A1000 |  | Acquire Staff | 14d | 1999-05-03 | 1999-05-16 |  | 0d | Project Manager [112 h] |
| A1010 |  | Initiate Iteration | 14d | 1999-05-03 | 1999-05-16 |  | 0d | Project Manager [112 h] |
| A1020 |  | Assess Iteration | 14d | 1999-05-03 | 1999-05-16 |  | 0d | Project Manager [112 h] |
| A1030 |  | Iteration Evaluation Criteria Review | 14d | 1999-05-03 | 1999-05-16 |  | 0d | Project Reviewer [112 h] |
| A1040 |  | Iteration Acceptance Review | 14d | 1999-05-03 | 1999-05-16 |  | 0d | Project Reviewer [112 h] |
|  | 1.2 | **Monitor and Control Project** |  | 1999-05-03 | 1999-05-18 |  |  |  |
| A1050 |  | Schedule and Assign Work | 16d | 1999-05-03 | 1999-05-18 | A1000 SS, A1010 SS, A1020 SS, A1030 SS, A1040 SS | 0d | Project Manager [128 h] |
| A1060 |  | Monitor Project Status | 16d | 1999-05-03 | 1999-05-18 | A1000 SS, A1010 SS, A1020 SS, A1030 SS, A1040 SS | 0d | Project Manager [128 h] |
| A1070 |  | Report Status | 16d | 1999-05-03 | 1999-05-18 | A1000 SS, A1010 SS, A1020 SS, A1030 SS, A1040 SS | 0d | Project Manager [128 h] |
| A1080 |  | Handle Exceptions and Problems | 16d | 1999-05-03 | 1999-05-18 | A1000 SS, A1010 SS, A1020 SS, A1030 SS, A1040 SS | 0d | Project Manager [128 h] |
| A1090 |  | Project Review Authority (PRA) Project Review | 16d | 1999-05-03 | 1999-05-18 | A1000 SS, A1010 SS, A1020 SS, A1030 SS, A1040 SS | 0d | Project Reviewer [128 h] |
|  | 1.3 | **Reevaluate Project Scope and Risk** |  | 1999-05-17 | 1999-05-17 |  |  |  |
| A1100 |  | Identify and Assess Risks | 1d | 1999-05-17 | 1999-05-17 | A1000, A1010, A1020, A1030, A1040 | 0d | Project Manager [8 h] |
| A1110 |  | Develop Business Case | 1d | 1999-05-17 | 1999-05-17 | A1000, A1010, A1020, A1030, A1040 | 0d | Project Manager [8 h] |
|  | 1.4 | **Plan for Next Iteration** |  | 1999-05-18 | 1999-05-18 |  |  |  |
| A1120 |  | Develop Iteration Plan | 1d | 1999-05-18 | 1999-05-18 | A1100, A1110 | 0d | Project Manager [8 h] |
| A1130 |  | Develop Business case | 1d | 1999-05-18 | 1999-05-18 | A1100, A1110 | 0d | Project Manager [8 h] |
| A1140 |  | Iteration Plan Review | 1d | 1999-05-18 | 1999-05-18 | A1230 FF, A1100, A1110 | 0d | Project Reviewer [8 h] |
|  | 1.5 | **Refine Software Development Plan** |  | 1999-05-18 | 1999-05-18 |  |  |  |
| A1150 |  | Develop Measurement Plan | 1d | 1999-05-18 | 1999-05-18 | A1100, A1110 | 0d | Project Manager [8 h] |
| A1160 |  | Develop Risk Management Plan | 1d | 1999-05-18 | 1999-05-18 | A1100, A1110 | 0d | Project Manager [8 h] |
| A1170 |  | Develop Product Acceptance Plan | 1d | 1999-05-18 | 1999-05-18 | A1100, A1110 | 0d | Project Manager [8 h] |
| A1180 |  | Develop Problem Resolution Plan | 1d | 1999-05-18 | 1999-05-18 | A1100, A1110 | 0d | Project Manager [8 h] |
| A1190 |  | Define Project Organization and Staffing | 1d | 1999-05-18 | 1999-05-18 | A1100, A1110 | 0d | Project Manager [8 h] |
| A1200 |  | Define Monitoring & Control Processes | 1d | 1999-05-18 | 1999-05-18 | A1100, A1110 | 0d | Project Manager [8 h] |
| A1210 |  | Plan Phases and Iterations | 1d | 1999-05-18 | 1999-05-18 | A1100, A1110 | 0d | Project Manager [8 h] |
| A1220 |  | Compile Software Development Plan | 1d | 1999-05-18 | 1999-05-18 | A1100, A1110 | 0d | Project Manager [8 h] |
| A1230 |  | Project Planning Review | 1d | 1999-05-18 | 1999-05-18 | A1100, A1110 | 0d | Project Reviewer [8 h] |

| ID | WBS | Activity | Duration | Start | Finish | Predecessors | Total float | Free float | Resources |
| --- | --- | --- | --- | --- | --- | --- | --- | --- | --- |
|  | 2 | **Requirements** |  | 1999-05-03 | 1999-05-17 |  |  |  |  |
|  | 2.1 | **Analyze the Problem** |  | 1999-05-03 | 1999-05-04 |  |  |  |  |
| A1240 |  | Capture a Common Vocabulary | 2d | 1999-05-03 | 1999-05-04 | A1280 SS, A1290 SS, A1300 SS, A1310 SS, A1320 SS | 14d |  | System Analyst [16 h] |
| A1250 |  | Find Actors and Use Cases | 2d | 1999-05-03 | 1999-05-04 | A1280 SS, A1290 SS, A1300 SS, A1310 SS, A1320 SS | 14d |  | System Analyst [16 h] |
| A1260 |  | Develop Vision | 2d | 1999-05-03 | 1999-05-04 | A1280 SS, A1290 SS, A1300 SS, A1310 SS, A1320 SS | 14d |  | System Analyst [16 h] |
| A1270 |  | Develop Requirements Management Plan | 2d | 1999-05-03 | 1999-05-04 | A1280 SS, A1290 SS, A1300 SS, A1310 SS, A1320 SS | 14d |  | System Analyst [16 h] |
|  | 2.2 | **Understand Stakeholder Needs** |  | 1999-05-03 | 1999-05-04 |  |  |  |  |
| A1280 |  | Capture a Common Vocabulary | 2d | 1999-05-03 | 1999-05-04 |  | 14d |  | System Analyst [16 h] |
| A1290 |  | Elicit Stakeholder Requests | 2d | 1999-05-03 | 1999-05-04 |  | 14d |  | System Analyst [16 h] |
| A1300 |  | Develop Vision | 2d | 1999-05-03 | 1999-05-04 |  | 14d |  | System Analyst [16 h] |
| A1310 |  | Find Actors and Use Cases | 2d | 1999-05-03 | 1999-05-04 |  | 14d |  | System Analyst [16 h] |
| A1320 |  | Manage Dependencies | 2d | 1999-05-03 | 1999-05-04 |  | 14d |  | System Analyst [16 h] |
|  | 2.3 | **Define the System** |  | 1999-05-03 | 1999-05-04 |  |  |  |  |
| A1330 |  | Capture a Common Vocabulary | 2d | 1999-05-03 | 1999-05-04 |  | 2d |  | System Analyst [16 h] |
| A1340 |  | Find Actors and Use Cases | 2d | 1999-05-03 | 1999-05-04 |  | 2d |  | System Analyst [16 h] |
| A1350 |  | Manage Dependencies | 2d | 1999-05-03 | 1999-05-04 |  | 2d |  | System Analyst [16 h] |
|  | 2.4 | **Manage the Scope of the System** |  | 1999-05-04 | 1999-05-04 |  |  |  |  |
| A1360 |  | Develop Vision | 1d | 1999-05-04 | 1999-05-04 | A1330 SS+1d, A1340 SS+1d, A1350 SS+1d | 14d |  | System Analyst [8 h] |
| A1370 |  | Manage Dependencies | 1d | 1999-05-04 | 1999-05-04 | A1330 SS+1d, A1340 SS+1d, A1350 SS+1d | 14d |  | System Analyst [8 h] |
| A1380 |  | Prioritize Use Cases | 1d | 1999-05-04 | 1999-05-04 | A1330 SS+1d, A1340 SS+1d, A1350 SS+1d | 2d | 0d | Software Architect [8 h] |
|  | 2.5 | **Refine the System Definition** |  | 1999-05-05 | 1999-05-16 |  |  |  |  |
| A1390 |  | Detail a Use Case | 9d | 1999-05-05 | 1999-05-13 | A1330, A1340, A1350, A1380 | 5d |  | Use-Case Specifier [72 h] |
| A1400 |  | Detail the Software Requirements | 12d | 1999-05-05 | 1999-05-16 | A1330, A1340, A1350, A1380 | 2d |  | Use-Case Specifier [96 h] |
|  | 2.6 | **Manage Changing Requirements** |  | 1999-05-03 | 1999-05-17 |  |  |  |  |
| A1410 |  | Structure the Use-Case Model | 12d | 1999-05-03 | 1999-05-14 | A1240 SS, A1250 SS, A1260 SS, A1270 SS | 4d |  | System Analyst [96 h] |
| A1420 |  | Manage Dependencies | 12d | 1999-05-03 | 1999-05-14 | A1240 SS, A1250 SS, A1260 SS, A1270 SS | 4d |  | System Analyst [96 h] |
| A1430 |  | Review Requirements | 15d | 1999-05-03 | 1999-05-17 | A1240 SS, A1250 SS, A1260 SS, A1270 SS | 1d |  | Requirements Reviewer [120 h] |

| ID | WBS | Activity | Duration | Start | Finish | Predecessors | Total float | Free float | Resources |
| --- | --- | --- | --- | --- | --- | --- | --- | --- | --- |
|  | 3 | **Analysis and Design** |  | 1999-05-03 | 1999-05-16 |  |  |  |  |
|  | 3.1 | **Define a Candidate Architecture** |  | 1999-05-03 | 1999-05-04 |  |  |  |  |
| A1440 |  | Architectural Analysis | 2d | 1999-05-03 | 1999-05-04 |  | 2d | 0d | Software Architect [16 h] |
| A1450 |  | Use-Case Analysis | 2d | 1999-05-03 | 1999-05-04 |  | 2d |  | Designer [16 h] |
|  | 3.2 | **Analyze Behavior** |  | 1999-05-05 | 1999-05-16 |  |  |  |  |
| A1460 |  | Identify Design Elements | 3d | 1999-05-05 | 1999-05-07 | A1440 | 11d |  | Software Architect [24 h] |
| A1470 |  | Use-Case Analysis | 3d | 1999-05-05 | 1999-05-07 | A1440 | 11d |  | Designer [24 h] |
| A1480 |  | Design the User Interface | 9d | 1999-05-05 | 1999-05-13 | A1440 | 5d |  | User-Interface Designer [72 h] |
| A1490 |  | Prototype the User Interface | 12d | 1999-05-05 | 1999-05-16 | A1440 | 2d |  | User-Interface Designer [96 h] |
| A1500 |  | Review the Design | 3d | 1999-05-05 | 1999-05-07 | A1440 | 11d |  | Design Reviewer [24 h] |
|  | 3.3 | **Design Components** |  | 1999-05-06 | 1999-05-13 |  |  |  |  |
| A1510 |  | Use-Case Design | 8d | 1999-05-06 | 1999-05-13 | A1460 SS+1d, A1470 SS+1d, A1480 SS+1d, A1490 SS+1d, A1500 SS+1d | 5d |  | Designer [64 h] |
| A1520 |  | Class Design | 8d | 1999-05-06 | 1999-05-13 | A1460 SS+1d, A1470 SS+1d, A1480 SS+1d, A1490 SS+1d, A1500 SS+1d | 5d |  | Designer [64 h] |
| A1530 |  | Subsystem Design | 8d | 1999-05-06 | 1999-05-13 | A1460 SS+1d, A1470 SS+1d, A1480 SS+1d, A1490 SS+1d, A1500 SS+1d | 5d |  | Designer [64 h] |
| A1540 |  | Review the Design | 8d | 1999-05-06 | 1999-05-13 | A1460 SS+1d, A1470 SS+1d, A1480 SS+1d, A1490 SS+1d, A1500 SS+1d | 5d |  | Design Reviewer [64 h] |
|  | 3.4 | **Design the Database** |  | 1999-05-06 | 1999-05-13 |  |  |  |  |
| A1550 |  | Class Design | 8d | 1999-05-06 | 1999-05-13 | A1510 SS, A1520 SS, A1530 SS, A1540 SS | 5d |  | Designer [64 h] |
| A1560 |  | Database Design | 8d | 1999-05-06 | 1999-05-13 | A1510 SS, A1520 SS, A1530 SS, A1540 SS | 5d |  | Database Designer [64 h] |
| A1570 |  | Review the Design | 8d | 1999-05-06 | 1999-05-13 | A1510 SS, A1520 SS, A1530 SS, A1540 SS | 5d |  | Design Reviewer [64 h] |
|  | 3.5 | **Refine the Architecture** |  | 1999-05-05 | 1999-05-16 |  |  |  |  |
| A1580 |  | Identify Design Mechanisms | 9d | 1999-05-05 | 1999-05-13 | A1440, A1450 | 5d |  | Software Architect [72 h] |
| A1590 |  | Identify Design Elements | 9d | 1999-05-05 | 1999-05-13 | A1440, A1450 | 5d |  | Software Architect [72 h] |
| A1600 |  | Incorporate Existing Design Elements | 9d | 1999-05-05 | 1999-05-13 | A1440, A1450 | 5d |  | Software Architect [72 h] |
| A1610 |  | Describe the Run-time Architecture | 9d | 1999-05-05 | 1999-05-13 | A1440, A1450 | 5d |  | Software Architect [72 h] |
| A1620 |  | Describe Distribution | 9d | 1999-05-05 | 1999-05-13 | A1440, A1450 | 5d |  | Software Architect [72 h] |
| A1630 |  | Review the Architecture | 12d | 1999-05-05 | 1999-05-16 | A1440, A1450 | 2d |  | Architecture Reviewer [96 h] |

| ID | WBS | Activity | Duration | Start | Finish | Predecessors | Total float | Resources |
| --- | --- | --- | --- | --- | --- | --- | --- | --- |
|  | 4 | **Implementation** |  | 1999-05-05 | 1999-05-11 |  |  |  |
|  | 4.1 | **Structure the Implementation Model** |  | 1999-05-05 | 1999-05-05 |  |  |  |
| A1640 |  | Structure the Implementation Model | 1d | 1999-05-05 | 1999-05-05 | A1440, A1450 | 13d | Software Architect [8 h] |
|  | 4.2 | **Plan the Integration** |  | 1999-05-06 | 1999-05-07 |  |  |  |
| A1650 |  | Plan System Integration | 2d | 1999-05-06 | 1999-05-07 | A1460 SS+1d, A1470 SS+1d, A1480 SS+1d, A1490 SS+1d, A1500 SS+1d | 8d | Integrator [16 h] |
|  | 4.3 | **Implement Components** |  | 1999-05-07 | 1999-05-09 |  |  |  |
| A1660 |  | Plan Subsystem Integration | 3d | 1999-05-07 | 1999-05-09 | A1510 SS+1d, A1520 SS+1d, A1530 SS+1d, A1540 SS+1d | 9d | Integrator [24 h] |
| A1670 |  | Implement Component | 3d | 1999-05-07 | 1999-05-09 | A1510 SS+1d, A1520 SS+1d, A1530 SS+1d, A1540 SS+1d | 9d | Implementer [24 h] |
| A1680 |  | Implement Testability Elements | 3d | 1999-05-07 | 1999-05-09 | A1510 SS+1d, A1520 SS+1d, A1530 SS+1d, A1540 SS+1d | 9d | Implementer [24 h] |
| A1690 |  | Implement Developer Test | 3d | 1999-05-07 | 1999-05-09 | A1510 SS+1d, A1520 SS+1d, A1530 SS+1d, A1540 SS+1d | 9d | Implementer [24 h] |
| A1700 |  | Execute Developer Test | 3d | 1999-05-07 | 1999-05-09 | A1510 SS+1d, A1520 SS+1d, A1530 SS+1d, A1540 SS+1d | 9d | Implementer [24 h] |
| A1710 |  | Review Code | 3d | 1999-05-07 | 1999-05-09 | A1510 SS+1d, A1520 SS+1d, A1530 SS+1d, A1540 SS+1d | 9d | Code Reviewer [24 h] |
|  | 4.4 | **Integrate Each Subsystem** |  | 1999-05-08 | 1999-05-10 |  |  |  |
| A1720 |  | Integrate Subsystem | 3d | 1999-05-08 | 1999-05-10 | A1650, A1660 SS+1d, A1670 SS+1d, A1680 SS+1d, A1690 SS+1d, A1700 SS+1d, A1710 SS+1d | 8d | Integrator [24 h] |
|  | 4.5 | **Integrate the System** |  | 1999-05-09 | 1999-05-11 |  |  |  |
| A1730 |  | Integrate System | 3d | 1999-05-09 | 1999-05-11 | A1720 SS+1d | 7d | Integrator [24 h] |
|  | 5 | **Test** |  | 1999-05-03 | 1999-05-14 |  |  |  |
|  | 5.1 | **Define Evaluation Mission** |  | 1999-05-03 | 1999-05-04 |  |  |  |
| A1740 |  | Identify Test Motivators | 2d | 1999-05-03 | 1999-05-04 |  | 9d | Test Manager [16 h] |
| A1750 |  | Agree Mission | 2d | 1999-05-03 | 1999-05-04 |  | 9d | Test Manager [16 h] |
| A1760 |  | Identify Targets of Test | 2d | 1999-05-03 | 1999-05-04 |  | 9d | Test Analyst [16 h] |
| A1770 |  | Define Assessment and Traceability Needs | 2d | 1999-05-03 | 1999-05-04 |  | 9d | Test Analyst [16 h] |
| A1780 |  | Identify Test Ideas | 2d | 1999-05-03 | 1999-05-04 |  | 9d | Test Analyst [16 h] |
| A1790 |  | Define Test Approach | 2d | 1999-05-03 | 1999-05-04 |  | 9d | Test Designer [16 h] |

| ID | WBS | Activity | Duration | Start | Finish | Predecessors | Total float | Resources |
| --- | --- | --- | --- | --- | --- | --- | --- | --- |
|  | 5.2 | **Verify Test Approach** |  | 1999-05-05 | 1999-05-06 |  |  |  |
| A1800 |  | Define Test Environment Configurations | 2d | 1999-05-05 | 1999-05-06 | A1740, A1750, A1760, A1770, A1780, A1790 | 12d | Test Designer [16 h] |
| A1810 |  | Identify Testability Mechanisms | 2d | 1999-05-05 | 1999-05-06 | A1740, A1750, A1760, A1770, A1780, A1790 | 12d | Test Designer [16 h] |
| A1820 |  | Define Testability Elements | 2d | 1999-05-05 | 1999-05-06 | A1740, A1750, A1760, A1770, A1780, A1790 | 12d | Test Designer [16 h] |
| A1830 |  | Define Test Details | 2d | 1999-05-05 | 1999-05-06 | A1740, A1750, A1760, A1770, A1780, A1790 | 12d | Test Analyst [16 h] |
| A1840 |  | Implement Test Suite | 2d | 1999-05-05 | 1999-05-06 | A1740, A1750, A1760, A1770, A1780, A1790 | 12d | Tester [16 h] |
| A1850 |  | Implement Test | 2d | 1999-05-05 | 1999-05-06 | A1740, A1750, A1760, A1770, A1780, A1790 | 12d | Tester [16 h] |
| A1860 |  | Obtain Testability Commitment | 2d | 1999-05-05 | 1999-05-06 | A1740, A1750, A1760, A1770, A1780, A1790 | 12d | Test Manager [16 h] |
|  | 5.3 | **Test and Evaluate** |  | 1999-05-09 | 1999-05-13 |  |  |  |
| A1870 |  | Implement Test | 5d | 1999-05-09 | 1999-05-13 | A1730 SS, A1740, A1750, A1760, A1770, A1780, A1790 | 5d | Tester [40 h] |
| A1880 |  | Implement Test Suite | 5d | 1999-05-09 | 1999-05-13 | A1730 SS, A1740, A1750, A1760, A1770, A1780, A1790 | 5d | Tester [40 h] |
| A1890 |  | Execute Test Suite | 5d | 1999-05-09 | 1999-05-13 | A1730 SS, A1740, A1750, A1760, A1770, A1780, A1790 | 5d | Tester [40 h] |
| A1900 |  | Analyze Test Failure | 5d | 1999-05-09 | 1999-05-13 | A1730 SS, A1740, A1750, A1760, A1770, A1780, A1790 | 5d | Tester [40 h] |
| A1910 |  | Structure the Test Implementation | 5d | 1999-05-09 | 1999-05-13 | A1730 SS, A1740, A1750, A1760, A1770, A1780, A1790 | 5d | Test Designer [40 h] |
| A1920 |  | Define Testability Elements | 5d | 1999-05-09 | 1999-05-13 | A1730 SS, A1740, A1750, A1760, A1770, A1780, A1790 | 5d | Test Designer [40 h] |
| A1930 |  | Identify Test Ideas | 5d | 1999-05-09 | 1999-05-13 | A1730 SS, A1740, A1750, A1760, A1770, A1780, A1790 | 5d | Test Analyst [40 h] |
| A1940 |  | Define Test Details | 5d | 1999-05-09 | 1999-05-13 | A1730 SS, A1740, A1750, A1760, A1770, A1780, A1790 | 5d | Test Analyst [40 h] |
| A1950 |  | Verify Changes in Build | 5d | 1999-05-09 | 1999-05-13 | A1730 SS, A1740, A1750, A1760, A1770, A1780, A1790 | 5d | Test Analyst [40 h] |
| A1960 |  | Determine Test Results | 5d | 1999-05-09 | 1999-05-13 | A1730 SS, A1740, A1750, A1760, A1770, A1780, A1790 | 5d | Test Analyst [40 h] |
| A1970 |  | Assess and Improve Test Effort | 5d | 1999-05-09 | 1999-05-13 | A1730 SS, A1740, A1750, A1760, A1770, A1780, A1790 | 5d | Test Manager [40 h] |
|  | 5.4 | **Achieve Acceptable Mission** |  | 1999-05-10 | 1999-05-13 |  |  |  |
| A1980 |  | Assess and Improve Test Effort | 4d | 1999-05-10 | 1999-05-13 | A1870 SS+1d, A1880 SS+1d, A1890 SS+1d, A1900 SS+1d, A1910 SS+1d, A1920 SS+1d, A1930 SS+1d, A1940 SS+1d, A1950 SS+1d, A1960 SS+1d, A1970 SS+1d | 5d | Test Manager [32 h] |
| A1990 |  | Assess and Advocate Quality | 4d | 1999-05-10 | 1999-05-13 | A1870 SS+1d, A1880 SS+1d, A1890 SS+1d, A1900 SS+1d, A1910 SS+1d, A1920 SS+1d, A1930 SS+1d, A1940 SS+1d, A1950 SS+1d, A1960 SS+1d, A1970 SS+1d | 5d | Test Manager [32 h] |
| A2000 |  | Determine Test Results | 4d | 1999-05-10 | 1999-05-13 | A1870 SS+1d, A1880 SS+1d, A1890 SS+1d, A1900 SS+1d, A1910 SS+1d, A1920 SS+1d, A1930 SS+1d, A1940 SS+1d, A1950 SS+1d, A1960 SS+1d, A1970 SS+1d | 5d | Test Analyst [32 h] |
| A2010 |  | Identify Test Ideas | 4d | 1999-05-10 | 1999-05-13 | A1870 SS+1d, A1880 SS+1d, A1890 SS+1d, A1900 SS+1d, A1910 SS+1d, A1920 SS+1d, A1930 SS+1d, A1940 SS+1d, A1950 SS+1d, A1960 SS+1d, A1970 SS+1d | 5d | Test Analyst [32 h] |
| A2020 |  | Analyze Test Failure | 4d | 1999-05-10 | 1999-05-13 | A1870 SS+1d, A1880 SS+1d, A1890 SS+1d, A1900 SS+1d, A1910 SS+1d, A1920 SS+1d, A1930 SS+1d, A1940 SS+1d, A1950 SS+1d, A1960 SS+1d, A1970 SS+1d | 5d | Tester [32 h] |
| A2030 |  | Implement Test | 4d | 1999-05-10 | 1999-05-13 | A1870 SS+1d, A1880 SS+1d, A1890 SS+1d, A1900 SS+1d, A1910 SS+1d, A1920 SS+1d, A1930 SS+1d, A1940 SS+1d, A1950 SS+1d, A1960 SS+1d, A1970 SS+1d | 5d | Tester [32 h] |
| A2040 |  | Implement Test Suite | 4d | 1999-05-10 | 1999-05-13 | A1870 SS+1d, A1880 SS+1d, A1890 SS+1d, A1900 SS+1d, A1910 SS+1d, A1920 SS+1d, A1930 SS+1d, A1940 SS+1d, A1950 SS+1d, A1960 SS+1d, A1970 SS+1d | 5d | Tester [32 h] |

| ID | WBS | Activity | Duration | Start | Finish | Predecessors | Total float | Resources |
| --- | --- | --- | --- | --- | --- | --- | --- | --- |
|  | 5.5 | **Improve Test Assets** |  | 1999-05-12 | 1999-05-14 |  |  |  |
| A2050 |  | Develop Test Guidelines | 3d | 1999-05-12 | 1999-05-14 | A1870 SS+3d, A1880 SS+3d, A1890 SS+3d, A1900 SS+3d, A1910 SS+3d, A1920 SS+3d, A1930 SS+3d, A1940 SS+3d, A1950 SS+3d, A1960 SS+3d, A1970 SS+3d | 4d | Test Designer [24 h] |
| A2060 |  | Define Testability Elements | 3d | 1999-05-12 | 1999-05-14 | A1870 SS+3d, A1880 SS+3d, A1890 SS+3d, A1900 SS+3d, A1910 SS+3d, A1920 SS+3d, A1930 SS+3d, A1940 SS+3d, A1950 SS+3d, A1960 SS+3d, A1970 SS+3d | 4d | Test Designer [24 h] |
| A2070 |  | Structure the Test Implementation | 3d | 1999-05-12 | 1999-05-14 | A1870 SS+3d, A1880 SS+3d, A1890 SS+3d, A1900 SS+3d, A1910 SS+3d, A1920 SS+3d, A1930 SS+3d, A1940 SS+3d, A1950 SS+3d, A1960 SS+3d, A1970 SS+3d | 4d | Test Designer [24 h] |
| A2080 |  | Identify Test Ideas | 3d | 1999-05-12 | 1999-05-14 | A1870 SS+3d, A1880 SS+3d, A1890 SS+3d, A1900 SS+3d, A1910 SS+3d, A1920 SS+3d, A1930 SS+3d, A1940 SS+3d, A1950 SS+3d, A1960 SS+3d, A1970 SS+3d | 4d | Test Analyst [24 h] |
| A2090 |  | Define Test Details | 3d | 1999-05-12 | 1999-05-14 | A1870 SS+3d, A1880 SS+3d, A1890 SS+3d, A1900 SS+3d, A1910 SS+3d, A1920 SS+3d, A1930 SS+3d, A1940 SS+3d, A1950 SS+3d, A1960 SS+3d, A1970 SS+3d | 4d | Test Analyst [24 h] |
| A2100 |  | Define Assessment and Traceability Needs | 3d | 1999-05-12 | 1999-05-14 | A1870 SS+3d, A1880 SS+3d, A1890 SS+3d, A1900 SS+3d, A1910 SS+3d, A1920 SS+3d, A1930 SS+3d, A1940 SS+3d, A1950 SS+3d, A1960 SS+3d, A1970 SS+3d | 4d | Test Analyst [24 h] |
| A2110 |  | Implement Test Suite | 3d | 1999-05-12 | 1999-05-14 | A1870 SS+3d, A1880 SS+3d, A1890 SS+3d, A1900 SS+3d, A1910 SS+3d, A1920 SS+3d, A1930 SS+3d, A1940 SS+3d, A1950 SS+3d, A1960 SS+3d, A1970 SS+3d | 4d | Tester [24 h] |
| A2120 |  | Implement Test | 3d | 1999-05-12 | 1999-05-14 | A1870 SS+3d, A1880 SS+3d, A1890 SS+3d, A1900 SS+3d, A1910 SS+3d, A1920 SS+3d, A1930 SS+3d, A1940 SS+3d, A1950 SS+3d, A1960 SS+3d, A1970 SS+3d | 4d | Tester [24 h] |
| A2130 |  | Assess and Improve Test Effort | 3d | 1999-05-12 | 1999-05-14 | A1870 SS+3d, A1880 SS+3d, A1890 SS+3d, A1900 SS+3d, A1910 SS+3d, A1920 SS+3d, A1930 SS+3d, A1940 SS+3d, A1950 SS+3d, A1960 SS+3d, A1970 SS+3d | 4d | Test Manager [24 h] |
|  | 6 | **Environment** |  | 1999-05-03 | 1999-05-17 |  |  |  |
|  | 6.1 | **Prepare Environment for an Iteration** |  | 1999-05-03 | 1999-05-03 |  |  |  |
| A2140 |  | Develop Development Case | 1d | 1999-05-03 | 1999-05-03 |  | 1d | Process Engineer [8 h] |
| A2150 |  | Prepare Templates | 1d | 1999-05-03 | 1999-05-03 |  | 1d | Process Engineer [8 h] |
| A2160 |  | Prepare Guidelines | 1d | 1999-05-03 | 1999-05-03 |  | 1d | Process Engineer [8 h] |
| A2170 |  | Launch Development Process | 1d | 1999-05-03 | 1999-05-03 |  | 1d | Process Engineer [8 h] |
| A2180 |  | Set Up Tools | 1d | 1999-05-03 | 1999-05-03 |  | 1d | Tool Specialist [8 h] |
| A2190 |  | Verify Tool Configuration & Installation | 1d | 1999-05-03 | 1999-05-03 |  | 1d | Tool Specialist [8 h] |
|  | 6.2 | **Support Environment During an Iteration** |  | 1999-05-04 | 1999-05-17 |  |  |  |
| A2200 |  | Support Development | 14d | 1999-05-04 | 1999-05-17 | A2140, A2150, A2160, A2170, A2180, A2190 | 1d | System Administrator [112 h] |
|  | 7 | **Configuration & Change Management** |  | 1999-05-03 | 1999-05-17 |  |  |  |
|  | 7.1 | **Change and Deliver Configuration Items** |  | 1999-05-03 | 1999-05-17 |  |  |  |
| A2210 |  | Create Baselines | 13d | 1999-05-03 | 1999-05-15 |  | 3d | Integrator [104 h] |
| A2220 |  | Promote Baselines | 13d | 1999-05-03 | 1999-05-15 |  | 3d | Integrator [104 h] |
| A2230 |  | Create Development Workspace | 13d | 1999-05-03 | 1999-05-15 |  | 3d | Any Worker [104 h] |
| A2240 |  | Make Changes | 13d | 1999-05-03 | 1999-05-15 |  | 3d | Any Worker [104 h] |
| A2250 |  | Deliver Changes | 13d | 1999-05-03 | 1999-05-15 |  | 3d | Any Worker [104 h] |
| A2260 |  | Update Workspace | 15d | 1999-05-03 | 1999-05-17 |  | 1d | Any Worker [120 h] |

| ID | WBS | Activity | Duration | Start | Finish | Total float | Resources |
| --- | --- | --- | --- | --- | --- | --- | --- |
|  | 7.2 | **Manage Baselines and Releases** |  | 1999-05-03 | 1999-05-17 |  |  |
| A2270 |  | Create Deployment Unit | 15d | 1999-05-03 | 1999-05-17 | 1d | Configuration Manager [120 h] |
| A2280 |  | Create Baselines | 13d | 1999-05-03 | 1999-05-15 | 3d | Integrator [104 h] |
| A2290 |  | Promote Baselines | 15d | 1999-05-03 | 1999-05-17 | 1d | Integrator [120 h] |
|  | 7.3 | **Manage Change Requests** |  | 1999-05-03 | 1999-05-17 |  |  |
| A2300 |  | Submit Change Request | 14d | 1999-05-03 | 1999-05-16 | 2d | Any Worker [112 h] |
| A2310 |  | Update Change Request | 15d | 1999-05-03 | 1999-05-17 | 1d | Any Worker [120 h] |
| A2320 |  | Review Change Request | 15d | 1999-05-03 | 1999-05-17 | 1d | Change Control Manager [120 h] |
| A2330 |  | Confirm Duplicate or Rejected Change Request | 15d | 1999-05-03 | 1999-05-17 | 1d | Change Control Manager [120 h] |
| A2340 |  | Verify Changes in Build | 15d | 1999-05-03 | 1999-05-17 | 1d | Integrator [120 h] |
|  | 7.4 | **Monitor and Report Configuration Status** |  | 1999-05-03 | 1999-05-17 |  |  |
| A2350 |  | Report on Configuration Status | 15d | 1999-05-03 | 1999-05-17 | 1d | Configuration Manager [120 h] |
| A2360 |  | Perform Configuration Audits | 15d | 1999-05-03 | 1999-05-17 | 1d | Configuration Manager [120 h] |
